# ipuatsons-WBS

Schedule from MS Project, 2022-08-01 to 2022-11-21.

## Calendars

- Standard: Mon-Fri 08:00-12:00, 13:00-17:00; Sat-Sun off.

## Resources

| Resource |
| --- |
| Pasin |
| Sutee |

## Schedule

| ID | WBS | Task | Type | Duration | Start | Finish | Predecessors | Total slack | Resources | Work |
| --- | --- | --- | --- | --- | --- | --- | --- | --- | --- | --- |
| 1 | 1 | **Requirement Analysis** |  | 7d | 2022-08-01 | 2022-08-09 |  |  |  | 192h |
| 2 | 1.1 | **Develop Project Title** |  | 4d | 2022-08-01 | 2022-08-04 |  | 0d |  | 80h |
| 3 | 1.1.1 | กำหนดจุดมุ่งหมายและขอบเขตการทำงาน |  | 1d | 2022-08-01 | 2022-08-01 |  | 3d | Pasin; Sutee | 16h |
| 4 | 1.1.2 | Develop, Review, Approval - Project Title |  | 4d | 2022-08-01 | 2022-08-04 |  | 0d | Pasin; Sutee | 64h |
| 5 | 1.2 | **Develop Preliminary Project Scope Statement** |  | 3d | 2022-08-05 | 2022-08-09 | 2 | 0d |  | 112h |
| 6 | 1.2.1 | กำหนด Functional Requirements |  | 3d | 2022-08-05 | 2022-08-09 |  | 0d | Pasin; Sutee | 48h |
| 7 | 1.2.2 | กำหนด Non Functional Requirements |  | 3d | 2022-08-05 | 2022-08-09 |  | 0d | Pasin; Sutee | 48h |
| 8 | 1.2.3 | กำหนดระยะเวลาการทำงาน |  | 1d | 2022-08-05 | 2022-08-05 |  | 2d | Pasin; Sutee | 16h |
| 9 | 2 | **Design Phase** |  | 5d | 2022-08-09 | 2022-08-16 | 1 | 0d |  | 232h |
| 10 | 2.1 | ออกแบบ UX/UI |  | 5d | 2022-08-10 | 2022-08-16 |  | 0d | Pasin | 40h |
| 11 | 2.2 | วาด Use Case Diagram |  | 3d | 2022-08-10 | 2022-08-12 |  | 2d | Pasin; Sutee | 48h |
| 12 | 2.3 | ออกแบบ Database |  | 2d | 2022-08-10 | 2022-08-11 |  | 3d | Pasin; Sutee | 32h |
| 13 | 2.4 | ประมวลภาพรวมการออกแบบครั้งที่ 1 |  | 0.5d | 2022-08-10 | 2022-08-10 |  | 4.5d | Pasin; Sutee | 8h |
| 14 | 2.5 | วาด Object Diagram |  | 1d | 2022-08-10 | 2022-08-10 |  | 4d | Pasin; Sutee | 16h |
| 15 | 2.6 | วาด Sequence Diagram |  | 5d | 2022-08-10 | 2022-08-16 |  | 0d | Pasin; Sutee | 80h |
| 16 | 2.7 | ประมวลภาพรวมการออกแบบครั้งที่ 2 |  | 0.5d | 2022-08-10 | 2022-08-10 |  | 4.5d | Pasin; Sutee | 8h |
| 17 | 2.8 | Design Phase เสร็จสิ้น | milestone | 0d | 2022-08-09 | 2022-08-09 |  | 5d |  |  |
| 18 | 3 | **Implementation - 1st** |  | 46d | 2022-08-17 | 2022-10-19 | 9 | 0d |  | 1332h |
| 19 | 3.1 | **Tools Study** |  | 3d | 2022-08-17 | 2022-08-19 | 9 | 0d |  | 128h |
| 20 | 3.1.1 | เรียนรู้เกี่ยวกับ Vuet js |  | 3d | 2022-08-17 | 2022-08-19 |  | 0d | Pasin | 24h |
| 21 | 3.1.2 | เรียนรู้เกี่ยวกับ Django |  | 3d | 2022-08-17 | 2022-08-19 |  | 0d | Pasin | 24h |
| 22 | 3.1.3 | เรียนรู้เกี่ยวกับ MongoDB |  | 2d | 2022-08-17 | 2022-08-18 |  | 1d | Pasin | 16h |
| 23 | 3.1.4 | เรียนรู้เกี่ยวกับ Ubuntu Server |  | 1d | 2022-08-17 | 2022-08-17 |  | 2d | Sutee | 8h |
| 24 | 3.1.5 | เรียนรู้เกี่ยวกับ Kubernetes |  | 2d | 2022-08-17 | 2022-08-18 |  | 1d | Sutee | 16h |
| 25 | 3.1.6 | เรียนรู้เกี่ยวกับ Microk8s |  | 1d | 2022-08-17 | 2022-08-17 |  | 2d | Sutee | 8h |
| 26 | 3.1.7 | เรียนรู้เกี่ยวกับ Docker |  | 2d | 2022-08-17 | 2022-08-18 |  | 1d | Sutee | 16h |
| 27 | 3.1.8 | เรียนรู้เกี่ยวกับ Nginx |  | 2d | 2022-08-17 | 2022-08-18 |  | 1d | Sutee | 16h |

| ID | WBS | Task | Duration | Start | Finish | Predecessors | Total slack | Resources | Work |
| --- | --- | --- | --- | --- | --- | --- | --- | --- | --- |
| 28 | 3.2 | **Coding Plan** | 1d | 2022-08-22 | 2022-08-22 | 19 | 0d |  | 40h |
| 29 | 3.2.1 | กำหนด Directory ในการทำงาน | 1d | 2022-08-22 | 2022-08-22 |  | 0d | Pasin; Sutee | 16h |
| 30 | 3.2.2 | กำหนด Version ของ framework และ libary ที่ใช้ | 1d | 2022-08-22 | 2022-08-22 |  | 0d | Pasin; Sutee | 16h |
| 31 | 3.2.3 | สร้างและตั้งค่า Github | 1d | 2022-08-22 | 2022-08-22 |  | 0d | Sutee | 8h |
| 32 | 3.3 | **Account & Login Page** | 3d | 2022-08-23 | 2022-08-25 | 28 | 0d |  | 88h |
| 33 | 3.3.1 | พัฒนาส่วน Front End | 3d | 2022-08-23 | 2022-08-25 |  | 0d | Pasin | 24h |
| 34 | 3.3.2 | พัฒนาส่วน Backend & API | 3d | 2022-08-23 | 2022-08-25 |  | 0d | Pasin; Sutee | 48h |
| 35 | 3.3.3 | ทดสอบ | 1d | 2022-08-23 | 2022-08-23 |  | 2d | Pasin; Sutee | 16h |
| 36 | 3.4 | **Feed Page** | 5d | 2022-08-26 | 2022-09-01 | 32 | 0d |  | 128h |
| 37 | 3.4.1 | พัฒนาส่วน Front End | 5d | 2022-08-26 | 2022-09-01 |  | 0d | Pasin | 40h |
| 38 | 3.4.2 | พัฒนาส่วน Backend & API | 5d | 2022-08-26 | 2022-09-01 |  | 0d | Pasin; Sutee | 80h |
| 39 | 3.4.3 | ทดสอบ | 0.5d | 2022-08-26 | 2022-08-26 |  | 4.5d | Pasin; Sutee | 8h |
| 40 | 3.5 | **Drive Page** | 5d | 2022-09-02 | 2022-09-08 | 36 | 0d |  | 128h |
| 41 | 3.5.1 | พัฒนาส่วน Front End | 5d | 2022-09-02 | 2022-09-08 |  | 0d | Pasin | 40h |
| 42 | 3.5.2 | พัฒนาส่วน Backend & API | 5d | 2022-09-02 | 2022-09-08 |  | 0d | Pasin; Sutee | 80h |
| 43 | 3.5.3 | ทดสอบ | 0.5d | 2022-09-02 | 2022-09-02 |  | 4.5d | Pasin; Sutee | 8h |
| 44 | 3.6 | **Application Page** | 5d | 2022-09-09 | 2022-09-15 | 40 | 0d |  | 128h |
| 45 | 3.6.1 | พัฒนาส่วน Front End | 5d | 2022-09-09 | 2022-09-15 |  | 0d | Pasin | 40h |
| 46 | 3.6.2 | พัฒนาส่วน Backend & API | 5d | 2022-09-09 | 2022-09-15 |  | 0d | Pasin; Sutee | 80h |
| 47 | 3.6.3 | ทดสอบ | 0.5d | 2022-09-09 | 2022-09-09 |  | 4.5d | Pasin; Sutee | 8h |
| 48 | 3.7 | **Setting Page** | 2d | 2022-09-16 | 2022-09-19 | 44 | 0d |  | 48h |
| 49 | 3.7.1 | พัฒนาส่วน Front End | 1d | 2022-09-16 | 2022-09-16 |  | 1d | Pasin | 8h |
| 50 | 3.7.2 | พัฒนาส่วน Backend & API | 2d | 2022-09-16 | 2022-09-19 |  | 0d | Pasin; Sutee | 32h |
| 51 | 3.7.3 | ทดสอบ | 0.5d | 2022-09-16 | 2022-09-16 |  | 1.5d | Pasin; Sutee | 8h |

| ID | WBS | Task | Type | Duration | Start | Finish | Predecessors | Total slack | Resources | Work |
| --- | --- | --- | --- | --- | --- | --- | --- | --- | --- | --- |
| 52 | 3.8 | **Server** |  | 5d | 2022-08-23 | 2022-08-29 | 28 | 15d |  | 84h |
| 53 | 3.8.1 | ติดตั้ง OS สำหรับ Server และสร้าง VM |  | 5d | 2022-08-23 | 2022-08-29 |  | 15d | Sutee | 40h |
| 54 | 3.8.2 | ตั้งค่า Network ของ Server |  | 5d | 2022-08-23 | 2022-08-29 |  | 15d | Sutee | 40h |
| 55 | 3.8.3 | ติดตั้งระบบ Cluster Kubernetes (MicroK8S) |  | 0.5d | 2022-08-23 | 2022-08-23 |  | 19.5d | Sutee | 4h |
| 56 | 3.8.4 | สร้างระบบ Dashboard | manual | 1d? | 2022-08-23 | 2022-08-23 |  |  |  |  |
| 57 | 3.9 | **1st Test Plan** |  | 3d | 2022-09-20 | 2022-09-22 | 32, 36, 40, 44, 48, 52 | 0d |  | 80h |
| 58 | 3.9.1 | ทดสอบการเชื่อมต่อกันระหว่าง Web Application และ Server |  | 2d | 2022-09-20 | 2022-09-21 |  | 1d | Pasin; Sutee | 32h |
| 59 | 3.9.2 | ประมวลผลการทดสอบ |  | 3d | 2022-09-20 | 2022-09-22 |  | 0d | Pasin; Sutee | 48h |
| 60 | 3.10 | **Mock Demo - 1st** |  | 7d | 2022-09-23 | 2022-10-03 | 57 | 0d |  | 128h |
| 61 | 3.10.1 | ทดสอบการกับกลุ่มผู้ใช้กลุ่มหนึง |  | 7d | 2022-09-23 | 2022-10-03 |  | 0d | Pasin; Sutee | 112h |
| 62 | 3.10.2 | ประเมินความพึงพอใจ |  | 1d | 2022-09-23 | 2022-09-23 |  | 6d | Pasin; Sutee | 16h |
| 63 | 3.11 | **การปรับปรุงจากผลตอบรับ - 1st** |  | 5d | 2022-10-04 | 2022-10-10 | 60 | 0d |  | 128h |
| 64 | 3.11.1 | พัฒนาส่วน Front End เพิ่มเติมจากผลการประเมินจากผู้ใช้ |  | 5d | 2022-10-04 | 2022-10-10 |  | 0d | Pasin | 40h |
| 65 | 3.11.2 | พัฒนาส่วน Backend & API เพิ่มเติมจากผลการประเมินจากผู้ใช้ |  | 5d | 2022-10-04 | 2022-10-10 |  | 0d | Pasin; Sutee | 80h |
| 66 | 3.11.3 | ทดสอบ |  | 0.5d | 2022-10-04 | 2022-10-04 |  | 4.5d | Pasin; Sutee | 8h |
| 67 | 3.12 | **เอกสารบทที่ 1-3** |  | 7d | 2022-10-11 | 2022-10-19 | 63 | 0d |  | 224h |
| 68 | 3.12.1 | เขียนเอกสาร |  | 7d | 2022-10-11 | 2022-10-19 |  | 0d | Pasin; Sutee | 112h |
| 69 | 3.12.2 | ส่งให้อาจารย์ที่ปรึกษา และ แก้ไข |  | 7d | 2022-10-11 | 2022-10-19 |  | 0d | Pasin; Sutee | 112h |
| 70 | 4 | **Implementation - 2nd** |  | 23d | 2022-10-20 | 2022-11-21 | 18 | 0d |  | 700h |
| 71 | 4.1 | **Application Page - model processing** |  | 2d | 2022-10-20 | 2022-10-21 | 18 | 0d |  | 48h |
| 72 | 4.1.1 | พัฒนาส่วน Front End |  | 1d | 2022-10-20 | 2022-10-20 |  | 1d | Pasin | 8h |
| 73 | 4.1.2 | พัฒนาส่วน Backend & API |  | 2d | 2022-10-20 | 2022-10-21 |  | 0d | Pasin; Sutee | 32h |
| 74 | 4.1.3 | ทดสอบ |  | 0.5d | 2022-10-20 | 2022-10-20 |  | 1.5d | Pasin; Sutee | 8h |
| 75 | 4.2 | **Market Place Page** |  | 2d | 2022-10-24 | 2022-10-25 | 71 | 0d |  | 48h |
| 76 | 4.2.1 | พัฒนาส่วน Front End |  | 1d | 2022-10-24 | 2022-10-24 |  | 1d | Pasin | 8h |
| 77 | 4.2.2 | พัฒนาส่วน Backend & API |  | 2d | 2022-10-24 | 2022-10-25 |  | 0d | Pasin; Sutee | 32h |
| 78 | 4.2.3 | ทดสอบ |  | 0.5d | 2022-10-24 | 2022-10-24 |  | 1.5d | Pasin; Sutee | 8h |

| ID | WBS | Task | Duration | Start | Finish | Predecessors | Total slack | Resources | Work |
| --- | --- | --- | --- | --- | --- | --- | --- | --- | --- |
| 79 | 4.3 | **Model Uplaod Page** | 2d | 2022-10-24 | 2022-10-25 | 71 | 0d |  | 32h |
| 80 | 4.3.1 | พัฒนาส่วน Front End | 1d | 2022-10-24 | 2022-10-24 |  | 1d | Pasin | 8h |
| 81 | 4.3.2 | พัฒนาส่วน Backend & API | 2d | 2022-10-24 | 2022-10-25 |  | 0d | Sutee | 16h |
| 82 | 4.3.3 | ทดสอบ | 0.5d | 2022-10-24 | 2022-10-24 |  | 1.5d | Pasin; Sutee | 8h |
| 83 | 4.4 | **Server** | 2d | 2022-10-20 | 2022-10-21 | 18 | 2d |  | 28h |
| 84 | 4.4.1 | พัฒนาส่วน Front End | 1d | 2022-10-20 | 2022-10-20 |  | 3d | Sutee | 8h |
| 85 | 4.4.2 | พัฒนาส่วน Backend & API | 2d | 2022-10-20 | 2022-10-21 |  | 2d | Sutee | 16h |
| 86 | 4.4.3 | ทดสอบ | 0.5d | 2022-10-20 | 2022-10-20 |  | 3.5d | Sutee | 4h |
| 87 | 4.5 | **Mock Demo - 2nd** | 1d | 2022-10-26 | 2022-10-26 | 71, 75, 79, 83 | 0d |  | 32h |
| 88 | 4.5.1 | ทดสอบการกับกลุ่มผู้ใช้กลุ่มหนึง | 1d | 2022-10-26 | 2022-10-26 |  | 0d | Pasin; Sutee | 16h |
| 89 | 4.5.2 | ประเมินความพึงพอใจ | 1d | 2022-10-26 | 2022-10-26 |  | 0d | Pasin; Sutee | 16h |
| 90 | 4.6 | **การปรับปรุงจากผลตอบรับ - 2st** | 5d | 2022-10-27 | 2022-11-02 | 87 | 0d |  | 128h |
| 91 | 4.6.1 | พัฒนาส่วน Front End เพิ่มเติมจากผลการประเมินจากผู้ใช้ | 5d | 2022-10-27 | 2022-11-02 |  | 0d | Pasin | 40h |
| 92 | 4.6.2 | พัฒนาส่วน Backend & API เพิ่มเติมจากผลการประเมินจากผู้ใช้ | 5d | 2022-10-27 | 2022-11-02 |  | 0d | Pasin; Sutee | 80h |
| 93 | 4.6.3 | ทดสอบ | 0.5d | 2022-10-27 | 2022-10-27 |  | 4.5d | Pasin; Sutee | 8h |
| 94 | 4.7 | **Mock Demo - 3rd** | 1d | 2022-11-03 | 2022-11-03 | 90 | 0d |  | 32h |
| 95 | 4.7.1 | ทดสอบการกับกลุ่มผู้ใช้กลุ่มหนึง | 1d | 2022-11-03 | 2022-11-03 |  | 0d | Pasin; Sutee | 16h |
| 96 | 4.7.2 | ประเมินความพึงพอใจ | 1d | 2022-11-03 | 2022-11-03 |  | 0d | Pasin; Sutee | 16h |
| 97 | 4.8 | **การปรับปรุงจากผลตอบรับ - 3rd** | 5d | 2022-11-04 | 2022-11-10 | 94 | 0d |  | 128h |
| 98 | 4.8.1 | พัฒนาส่วน Front End เพิ่มเติมจากผลการประเมินจากผู้ใช้ | 5d | 2022-11-04 | 2022-11-10 |  | 0d | Pasin | 40h |
| 99 | 4.8.2 | พัฒนาส่วน Backend & API เพิ่มเติมจากผลการประเมินจากผู้ใช้ | 5d | 2022-11-04 | 2022-11-10 |  | 0d | Pasin; Sutee | 80h |
| 100 | 4.8.3 | ทดสอบ | 0.5d | 2022-11-04 | 2022-11-04 |  | 4.5d | Pasin; Sutee | 8h |
| 101 | 4.9 | **เอกสารบทที่ 4-6** | 7d | 2022-11-11 | 2022-11-21 | 97 | 0d |  | 224h |
| 102 | 4.9.1 | เขียนเอกสาร | 7d | 2022-11-11 | 2022-11-21 |  | 0d | Pasin; Sutee | 112h |
| 103 | 4.9.2 | ส่งให้อาจารย์ที่ปรึกษา และ แก้ไข | 7d | 2022-11-11 | 2022-11-21 |  | 0d | Pasin; Sutee | 112h |
